# Ejemplo con Fórmula Last Version

Schedule from MS Project, 2014-01-02 to 2015-05-13, status date 2010-02-17.

## Calendars

- Estándar: Mon-Fri 09:00-13:00, 15:00-19:00; Sat-Sun off. Exceptions (off unless hours are given): 2014-03-03 to 2014-03-04 (Carnval), 2014-03-24 (Memoria), 2014-04-02 (Malvinas), 2014-04-17 to 2014-04-18 (Pascuas), 2014-05-01 to 2014-05-02 (Trabajador), 2014-05-25 (Revolución Mayo), 2014-06-20 (Bandera), 2014-07-09 (Independencia), 2014-08-18 (San Martin), 2014-10-13 (Raza), 2014-11-24 (Soberania), 2014-12-08 (Virgen), 2014-12-24 to 2014-12-26 (Navidad), 2014-12-31 to 2015-01-01 (Año nuevo).

## Resources

| Resource |
| --- |
| Seguridad Informática |
| Operaciones |
| Usuario referente del negocio |
| Analista Funcional |
| Analista Técnico |
| Programador 1 |
| Programador 2 |
| Tester |
| Project Manager |
| Servicio Profesional Contratado Redes |
| Servicio Profesional Contratado Infraestructura |
| Programador 4 |
| Programador 3 |

## Schedule

| ID | WBS | Task | Type | Duration | Start | Finish | Predecessors | Total slack | Free slack | Constraint | Resources | Work | Text1 |
| --- | --- | --- | --- | --- | --- | --- | --- | --- | --- | --- | --- | --- | --- |
| 1 | 1 | **Proyecto Control de Acceso** |  | 335.5d | 2014-01-02 | 2015-05-13 |  | -161.62d | 0d |  |  | 10428h |  |
| 2 | 1.1 | **Planificación detallada** |  | 4d | 2014-01-16 | 2014-01-21 |  | -161.62d | 0d |  |  | 64h | RE |
| 3 | 1.1.1 | Estimación de tiempos de progamador |  | 1d | 2014-01-16 | 2014-01-16 | 9 | -152.62d | 0d | start no earlier than 2014-01-10 | Programador 1; Programador 2 | 16h | RE |
| 4 | 1.1.2 | Confección de cronograma de actividades |  | 3d | 2014-01-17 | 2014-01-21 | 3 | -152.62d | 0d | start no earlier than 2014-01-10 | Project Manager; Analista Funcional | 48h | RE |
| 5 | 1.2 | **Análisis y diseño** |  | 59d | 2014-01-02 | 2014-03-28 |  | -161.62d | 0d |  |  | 760h | RE |
| 6 | 1.2.1 | **Análisis** |  | 10d | 2014-01-02 | 2014-01-15 |  | -161.62d | 0d |  |  | 104h | RE |
| 7 | 1.2.1.1 | Elaboración del documento de alcance |  | 5d | 2014-01-02 | 2014-01-08 |  | -152.62d | 0d | start no earlier than 2014-01-02 | Analista Funcional | 40h | RE |
| 8 | 1.2.1.2 | Validación del documento de alcance |  | 3d | 2014-01-09 | 2014-01-13 | 7 | -152.62d | 0d | start no earlier than 2014-01-03 | Analista Funcional; Usuario referente del negocio | 48h | RE |
| 9 | 1.2.1.3 | Aprobación del documento de alcance |  | 2d | 2014-01-14 | 2014-01-15 | 8 | -152.62d | 0d | start no earlier than 2014-01-08 | Usuario referente del negocio | 16h | RE |
| 10 | 1.2.2 | **Diseño** |  | 45d | 2014-01-22 | 2014-03-28 |  | -161.62d | 0d |  |  | 656h | RE |
| 11 | 1.2.2.1 | **Entrega de datos** |  | 45d | 2014-01-22 | 2014-03-28 |  | -2.12d | 0d |  |  | 408h | RE |
| 12 | 1.2.2.1.1 | Entrega Datos de Red (IP, Mácara, Gateway) |  | 2d | 2014-01-22 | 2014-01-23 | 4 | -2.12d | 0d | start no earlier than 2014-01-21 | Usuario referente del negocio | 16h | RE |
| 13 | 1.2.2.1.2 | Entrega Datos de Conexión LDAP |  | 2d | 2014-01-24 | 2014-01-27 | 12 | 75.88d | 0d |  | Usuario referente del negocio | 16h | RE |
| 14 | 1.2.2.1.3 | Validación de los datos comunicación |  | 2d | 2014-01-28 | 2014-01-29 | 12, 13 | 75.88d | 0d | start no earlier than 2014-01-28 | Usuario referente del negocio; Analista Funcional | 32h | RE |
| 15 | 1.2.2.1.4 | **Datos del Negocio** |  | 30d | 2014-01-30 | 2014-03-14 |  | 75.88d | 0d |  |  | 240h | RE |
| 16 | 1.2.2.1.4.1 | Entrega Datos de Personas | milestone | 5d | 2014-01-30 | 2014-02-05 | 14 | 75.88d | 0d | start no earlier than 2014-01-21 | Usuario referente del negocio | 40h | RE |
| 17 | 1.2.2.1.4.2 | Entrega Datos de Vehículos |  | 5d | 2014-02-06 | 2014-02-12 | 16 | 75.88d | 0d | start no earlier than 2014-01-21 | Usuario referente del negocio | 40h | RE |
| 18 | 1.2.2.1.4.3 | Entrega Datos de Productos | milestone | 5d | 2014-02-13 | 2014-02-19 | 17 | 75.88d | 0d | start no earlier than 2014-01-21 | Usuario referente del negocio | 40h | RE |
| 19 | 1.2.2.1.4.4 | Entrega Datos de Registro entrada y salida de Personas |  | 5d | 2014-02-20 | 2014-02-26 | 18 | 75.88d | 0d | start no earlier than 2014-01-21 | Usuario referente del negocio | 40h | RE |
| 20 | 1.2.2.1.4.5 | Entrega Datos de Registro entrada y salida de Vehículos |  | 5d | 2014-02-27 | 2014-03-07 | 19 | 75.88d | 0d | start no earlier than 2014-01-21 | Usuario referente del negocio | 40h | RE |
| 21 | 1.2.2.1.4.6 | Entrega Datos de Registro entrada y salida de Productos |  | 5d | 2014-03-10 | 2014-03-14 | 20 | 75.88d |  | start no earlier than 2014-01-21 | Usuario referente del negocio | 40h | RE |
| 22 | 1.2.2.1.5 | Validación de los datos del negocio |  | 2d | 2014-03-17 | 2014-03-18 | 15 | 75.88d | 0d | start no earlier than 2014-02-04 | Usuario referente del negocio; Analista Funcional | 32h | RE |
| 23 | 1.2.2.1.6 | Entrega de los usuarios y roles | milestone | 5d | 2014-03-19 | 2014-03-26 | 22 | 78.88d | 0d | start no earlier than 2014-01-21 | Usuario referente del negocio | 40h | RE |
| 24 | 1.2.2.1.7 | Validación de los usuarios y roles |  | 2d | 2014-03-27 | 2014-03-28 | 23 | 78.88d | 0d | start no earlier than 2014-02-11 | Analista Funcional; Usuario referente del negocio | 32h | RE |

| ID | WBS | Task | Duration | Start | Finish | Predecessors | Total slack | Free slack | Constraint | Resources | Work | Text1 |
| --- | --- | --- | --- | --- | --- | --- | --- | --- | --- | --- | --- | --- |
| 25 | 1.2.2.2 | **Documentación** | 27d | 2014-01-22 | 2014-02-27 |  | -161.62d | 0d |  |  | 248h | RE |
| 26 | 1.2.2.2.1 | Elaborar el DER | 2d | 2014-01-22 | 2014-01-23 | 9, 4 | -152.62d | 0d | start no earlier than 2014-01-15 | Programador 1; Programador 2; Analista Funcional | 48h | RE |
| 27 | 1.2.2.2.2 | Elaborar los casos de uso | 15d | 2014-01-24 | 2014-02-13 | 26 | -152.62d | 0d | start no earlier than 2014-01-15 | Analista Funcional | 120h | RE |
| 28 | 1.2.2.2.3 | Elaborar los casos de prueba | 10d | 2014-02-14 | 2014-02-27 | 27 | 285.5d |  | start no earlier than 2014-02-11 | Analista Funcional | 80h | RE |
| 29 | 1.3 | **Infraestructura** | 40.88d | 2014-01-22 | 2014-03-21 |  |  |  |  |  | 856h | RE |
| 30 | 1.3.1 | **Buenos Aires Oficina Central** | 5d | 2014-01-24 | 2014-01-30 |  | -2.12d | 0d |  |  | 88h | RE |
| 31 | 1.3.1.1 | Instalación servidores en Buenos Aires Central | 5d | 2014-01-24 | 2014-01-30 | 4, 12 | -2.12d | 0d | start no earlier than 2014-01-21 | Analista Técnico | 40h | RE |
| 32 | 1.3.1.2 | Instalación rack en datacenter en Buenos Aires Central | 1d | 2014-01-24 | 2014-01-24 | 4, 12 | -1.12d | 0d |  | Servicio Profesional Contratado Infraestructura | 8h | RE |
| 33 | 1.3.1.3 | Instalación infraestructura en Buenos Aires Central | 3d | 2014-01-27 | 2014-01-29 | 32 | -1.12d | 0d |  | Servicio Profesional Contratado Infraestructura | 24h | RE |
| 34 | 1.3.1.4 | Instalación red en datacenter en Buenos Aires Central | 2d | 2014-01-24 | 2014-01-27 | 4, 12 | 0.88d |  |  | Servicio Profesional Contratado Redes | 16h | RE |
| 35 | 1.3.2 | **Buenos Aires Oficina 2** | 3d | 2014-01-31 | 2014-02-04 |  | -2.12d | 0d |  |  | 64h | RE |
| 36 | 1.3.2.1 | Instalación cliente-servidor en Buenos Aires Oficina 2 | 3d | 2014-01-31 | 2014-02-04 | 30 | -2.12d | 0d | start no earlier than 2014-01-29 | Analista Técnico | 24h | RE |
| 37 | 1.3.2.2 | Instalación infraestructura en Buenos Aires Oficina 2 | 3d | 2014-01-31 | 2014-02-04 | 30 | -2.12d | 0d |  | Servicio Profesional Contratado Infraestructura | 24h | RE |
| 38 | 1.3.2.3 | Instalación red cliente-servidor en Buenos Aires Oficina 2 | 2d | 2014-01-31 | 2014-02-03 | 30 | -1.12d | 0d |  | Servicio Profesional Contratado Redes | 16h | RE |
| 39 | 1.3.3 | **Santa Fe Planta Productora** | 3d | 2014-02-05 | 2014-02-07 |  | -2.12d | 0d |  |  | 64h | RE |
| 40 | 1.3.3.1 | Instalación cliente-servidor en Santa Fe Planta Productora | 3d | 2014-02-05 | 2014-02-07 | 35 | -2.12d | 0d | start no earlier than 2014-02-03 | Analista Técnico | 24h | RE |
| 41 | 1.3.3.2 | Instalación infraestructura en Santa Fe Planta Productora | 3d | 2014-02-05 | 2014-02-07 | 35 | -2.12d | 0d |  | Servicio Profesional Contratado Infraestructura | 24h | RE |
| 42 | 1.3.3.3 | Instalación red cliente-servidor en Santa Fe Planta Productora | 2d | 2014-02-05 | 2014-02-06 | 35 | -1.12d | 0d |  | Servicio Profesional Contratado Redes | 16h | RE |
| 43 | 1.3.4 | **Depósito 1** | 3d | 2014-02-10 | 2014-02-12 |  | -2.12d | 0d |  |  | 64h | RE |
| 44 | 1.3.4.1 | Instalación cliente-servidor en Depósito 1 | 3d | 2014-02-10 | 2014-02-12 | 39 | -2.12d | 0d | start no earlier than 2014-02-06 | Analista Técnico | 24h | RE |
| 45 | 1.3.4.2 | Instalación infraestructura en Depósito 1 | 3d | 2014-02-10 | 2014-02-12 | 39 | -2.12d | 0d |  | Servicio Profesional Contratado Infraestructura | 24h | RE |
| 46 | 1.3.4.3 | Instalación red cliente-servidor en Depósito 1 | 2d | 2014-02-10 | 2014-02-11 | 39 | -1.12d | 0d |  | Servicio Profesional Contratado Redes | 16h | RE |
| 47 | 1.3.5 | **Depósito 2** | 3d | 2014-02-13 | 2014-02-17 |  | -2.12d | 0d |  |  | 64h | RE |
| 48 | 1.3.5.1 | Instalación cliente-servidor en Depósito 2 | 3d | 2014-02-13 | 2014-02-17 | 43 | -2.12d | 0d | finish no earlier than 2014-02-11 | Analista Técnico | 24h | RE |
| 49 | 1.3.5.2 | Instalación infraestructura en Depósito 2 | 3d | 2014-02-13 | 2014-02-17 | 43 | -2.12d | 0d |  | Servicio Profesional Contratado Infraestructura | 24h | RE |
| 50 | 1.3.5.3 | Instalación red cliente-servidor en Depósito 2 | 2d | 2014-02-13 | 2014-02-14 | 43 | -1.12d | 0d |  | Servicio Profesional Contratado Redes | 16h | RE |

| ID | WBS | Task | Duration | Start | Finish | Predecessors | Total slack | Free slack | Constraint | Resources | Work | Text1 |
| --- | --- | --- | --- | --- | --- | --- | --- | --- | --- | --- | --- | --- |
| 51 | 1.3.6 | **Depósito 3** | 3d | 2014-02-18 | 2014-02-20 |  | -2.12d | 0d |  |  | 64h | RE |
| 52 | 1.3.6.1 | Instalación cliente-servidor en Depósito 3 | 3d | 2014-02-18 | 2014-02-20 | 47 | -2.12d | 0d | finish no earlier than 2014-02-11 | Analista Técnico | 24h | RE |
| 53 | 1.3.6.2 | Instalación infraestructura en Depósito 3 | 3d | 2014-02-18 | 2014-02-20 | 47 | -2.12d | 0d |  | Servicio Profesional Contratado Infraestructura | 24h | RE |
| 54 | 1.3.6.3 | Instalación red cliente-servidor en Depósito 3 | 2d | 2014-02-18 | 2014-02-19 | 47 | -1.12d | 0d |  | Servicio Profesional Contratado Redes | 16h | RE |
| 55 | 1.3.7 | **Depósito 4** | 3d | 2014-02-21 | 2014-02-25 |  | -2.12d | 0d |  |  | 64h | RE |
| 56 | 1.3.7.1 | Instalación cliente-servidor en Depósito 4 | 3d | 2014-02-21 | 2014-02-25 | 51 | -2.12d | 0d | finish no earlier than 2014-02-11 | Analista Técnico | 24h | RE |
| 57 | 1.3.7.2 | Instalación infraestructura en Depósito 4 | 3d | 2014-02-21 | 2014-02-25 | 51 | -2.12d | 0d |  | Servicio Profesional Contratado Infraestructura | 24h | RE |
| 58 | 1.3.7.3 | Instalación red cliente-servidor en Depósito 4 | 2d | 2014-02-21 | 2014-02-24 | 51 | -1.12d | 0d |  | Servicio Profesional Contratado Redes | 16h | RE |
| 59 | 1.3.8 | **Depósito 5** | 3d | 2014-02-26 | 2014-02-28 |  | -2.12d | 0d |  |  | 64h | RE |
| 60 | 1.3.8.1 | Instalación cliente-servidor en Depósito 5 | 3d | 2014-02-26 | 2014-02-28 | 55 | -2.12d | 0d | finish no earlier than 2014-02-11 | Analista Técnico | 24h | RE |
| 61 | 1.3.8.2 | Instalación infraestructura en Depósito 5 | 3d | 2014-02-26 | 2014-02-28 | 55 | -2.12d | 0d |  | Servicio Profesional Contratado Infraestructura | 24h | RE |
| 62 | 1.3.8.3 | Instalación red cliente-servidor en Depósito 5 | 2d | 2014-02-26 | 2014-02-27 | 55 | -1.12d | 0d |  | Servicio Profesional Contratado Redes | 16h | RE |
| 63 | 1.3.9 | **Depósito 6** | 3d | 2014-03-05 | 2014-03-07 |  | -2.12d | 0d |  |  | 64h | RE |
| 64 | 1.3.9.1 | Instalación cliente-servidor en Depósito 6 | 3d | 2014-03-05 | 2014-03-07 | 59 | -2.12d | 0d | finish no earlier than 2014-02-11 | Analista Técnico | 24h | RE |
| 65 | 1.3.9.2 | Instalación infraestructura en Depósito 6 | 3d | 2014-03-05 | 2014-03-07 | 59 | -2.12d | 0d |  | Servicio Profesional Contratado Infraestructura | 24h | RE |
| 66 | 1.3.9.3 | Instalación red cliente-servidor en Depósito 6 | 2d | 2014-03-05 | 2014-03-06 | 59 | -1.12d | 0d |  | Servicio Profesional Contratado Redes | 16h | RE |
| 67 | 1.3.10 | **Depósito 7** | 3d | 2014-03-10 | 2014-03-12 |  | -2.12d | 0d |  |  | 64h | RE |
| 68 | 1.3.10.1 | Instalación cliente-servidor en Depósito 7 | 3d | 2014-03-10 | 2014-03-12 | 63 | -2.12d | 0d | finish no earlier than 2014-02-11 | Analista Técnico | 24h | RE |
| 69 | 1.3.10.2 | Instalación infraestructura en Depósito 7 | 3d | 2014-03-10 | 2014-03-12 | 63 | -2.12d | 0d |  | Servicio Profesional Contratado Infraestructura | 24h | RE |
| 70 | 1.3.10.3 | Instalación red cliente-servidor en Depósito 7 | 2d | 2014-03-10 | 2014-03-11 | 63 | -1.12d | 0d |  | Servicio Profesional Contratado Redes | 16h | RE |
| 71 | 1.3.11 | **Depósito 8** | 3d | 2014-03-13 | 2014-03-17 |  | -2.12d | 0d |  |  | 64h | RE |
| 72 | 1.3.11.1 | Instalación cliente-servidor en Depósito 8 | 3d | 2014-03-13 | 2014-03-17 | 67 | -2.12d | 0d | finish no earlier than 2014-02-11 | Analista Técnico | 24h | RE |
| 73 | 1.3.11.2 | Instalación infraestructura en Depósito 8 | 3d | 2014-03-13 | 2014-03-17 | 67 | -2.12d | 0d |  | Servicio Profesional Contratado Infraestructura | 24h | RE |
| 74 | 1.3.11.3 | Instalación red cliente-servidor en Depósito 8 | 2d | 2014-03-13 | 2014-03-14 | 67 | -1.12d | 0d |  | Servicio Profesional Contratado Redes | 16h | RE |

| ID | WBS | Task | Duration | Start | Finish | Predecessors | Total slack | Free slack | Constraint | Resources | Work | Text1 |
| --- | --- | --- | --- | --- | --- | --- | --- | --- | --- | --- | --- | --- |
| 75 | 1.3.12 | **Depósito 9** | 3d | 2014-03-18 | 2014-03-20 |  | -2.12d | 0d |  |  | 64h | RE |
| 76 | 1.3.12.1 | Instalación cliente-servidor en Depósito 9 | 3d | 2014-03-18 | 2014-03-20 | 71 | -2.12d | 0d | finish no earlier than 2014-02-11 | Analista Técnico | 24h | RE |
| 77 | 1.3.12.2 | Instalación infraestructura en Depósito 9 | 3d | 2014-03-18 | 2014-03-20 | 71 | -2.12d | 0d |  | Servicio Profesional Contratado Infraestructura | 24h | RE |
| 78 | 1.3.12.3 | Instalación red cliente-servidor en Depósito 9 | 2d | 2014-03-18 | 2014-03-19 | 71 | -1.12d | 0d |  | Servicio Profesional Contratado Redes | 16h | RE |
| 79 | 1.3.13 | **Depósito 10** | 3d | 2014-03-21 | 2014-03-26 |  | -2.12d | 0d |  |  | 64h | RE |
| 80 | 1.3.13.1 | Instalación cliente-servidor en Depósito 10 | 3d | 2014-03-21 | 2014-03-26 | 75 | -2.12d | 0d | finish no earlier than 2014-02-11 | Analista Técnico | 24h | RE |
| 81 | 1.3.13.2 | Instalación infraestructura en Depósito 10 | 3d | 2014-03-21 | 2014-03-26 | 75 | -2.12d | 0d |  | Servicio Profesional Contratado Infraestructura | 24h | RE |
| 82 | 1.3.13.3 | Instalación red cliente-servidor en Depósito 10 | 2d | 2014-03-21 | 2014-03-25 | 75 | -1.12d | 0d |  | Servicio Profesional Contratado Redes | 16h | RE |
| 83 | 1.4 | **Construcción y pruebas** | 265.5d | 2014-02-14 | 2015-03-19 |  | -161.62d | 0d |  |  | 7644h |  |
| 84 | 1.4.1 | **Construcción** | 170.5d | 2014-02-14 | 2014-10-28 |  | -161.62d | 0d |  |  | 4732h |  |
| 85 | 1.4.1.1 | **Módulo base** | 8d | 2014-02-14 | 2014-02-25 |  | -161.62d | 0d |  |  | 128h | RE |
| 86 | 1.4.1.1.1 | Construcción del modelo de datos | 3d | 2014-02-14 | 2014-02-18 | 27, 26 | -152.62d | 0d |  | Programador 1; Programador 2 | 48h | RE |
| 87 | 1.4.1.1.2 | Construcción módulo base de solución oficina central | 5d | 2014-02-19 | 2014-02-25 | 86 | -383.62d | 0d |  | Programador 1 | 40h | RE |
| 88 | 1.4.1.1.3 | Contrucción módulo base de cliente servidor | 5d | 2014-02-19 | 2014-02-25 | 86 | -182.62d | 0d |  | Programador 2 | 40h | RE |
| 89 | 1.4.1.2 | **Requerimientos de Roles** | 38d | 2014-02-26 | 2014-04-28 |  | -156.12d | 0d |  |  | 304h | RE |
| 90 | 1.4.1.2.1 | RFN-Administración de roles | 19d | 2014-02-26 | 2014-03-27 | 87 | -383.62d | 0d |  | Programador 1 | 152h | RE |
| 91 | 1.4.1.2.2 | RFN-Asignación de roles a usuarios | 19d | 2014-03-28 | 2014-04-28 | 90 | -383.62d | 0d |  | Programador 1 | 152h | RE |
| 92 | 1.4.1.3 | **Requerimientos de Usuarios** | 29.5d | 2014-02-26 | 2014-04-14 |  | -153.62d | 0d |  |  | 236h | RE |
| 93 | 1.4.1.3.1 | RFN-Usuarios LDAP y usuarios locales | 3d | 2014-02-26 | 2014-02-28 | 88 | -130.62d | 0d |  | Programador 2 | 24h | RE |
| 94 | 1.4.1.3.2 | RFN-Administración de usuarios | 19d | 2014-03-05 | 2014-04-01 | 93 | -130.62d | 0d |  | Programador 2 | 152h | RE |
| 95 | 1.4.1.3.3 | RFN-Reporte para monitoreo de usuarios | 7.5d | 2014-04-03 | 2014-04-14 | 94 | -130.62d | 0d |  | Programador 2 | 60h | RE |
| 96 | 1.4.1.4 | **Requerimiento de Logs** | 83.5d | 2014-02-26 | 2014-07-04 |  | -155.12d | 0d |  |  | 668h | RE |
| 97 | 1.4.1.4.1 | RFN-Logs de errores | 13d | 2014-02-26 | 2014-03-18 | 88 | -132.12d | 0d |  | Programador 3 | 104h | RE |
| 98 | 1.4.1.4.2 | RFN-Registro de logs de cambios | 28d | 2014-03-19 | 2014-05-05 | 97 | -132.12d | 0d |  | Programador 3 | 224h | RE |
| 99 | 1.4.1.4.3 | RFN-Consulta de logs de cambios | 11d | 2014-05-06 | 2014-05-20 | 98 | -132.12d | 0d |  | Programador 3 | 88h | RE |
| 100 | 1.4.1.4.4 | RFN-Registro de eventos de seguridad en la aplicación | 13d | 2014-05-21 | 2014-06-06 | 99 | -155.12d | 0d |  | Programador 3 | 104h | RE |
| 101 | 1.4.1.4.5 | RFN-Consultas de eventos de seguridad en la aplicación | 5.5d | 2014-06-09 | 2014-06-16 | 100 | -155.12d | 0d |  | Programador 3 | 44h | RE |
| 102 | 1.4.1.4.6 | RFN-Registro de eventos en la Base de Datos | 13d | 2014-06-16 | 2014-07-04 | 101 | -155.12d | 0d |  | Programador 3 | 104h | RE |

| ID | WBS | Task | Duration | Start | Finish | Predecessors | Total slack | Free slack | Constraint | Resources | Work | Text1 |
| --- | --- | --- | --- | --- | --- | --- | --- | --- | --- | --- | --- | --- |
| 103 | 1.4.1.5 | **Requerimientos sobre Configuración** | 37.5d | 2014-02-26 | 2014-04-28 |  | -161.62d | 0d |  |  | 300h | RE |
| 104 | 1.4.1.5.1 | RFN-Mantenedores | 13d | 2014-02-26 | 2014-03-18 | 88 | -138.62d | 0d |  | Programador 4 | 104h | RE |
| 105 | 1.4.1.5.2 | RFN-Depuración de información | 19d | 2014-03-19 | 2014-04-16 | 104 | -138.62d | 0d |  | Programador 4 | 152h | RE |
| 106 | 1.4.1.5.3 | RFN-Ayuda On-line (Simple) | 5.5d | 2014-04-21 | 2014-04-28 | 105 | -138.62d | 0d |  | Programador 4 | 44h | RE |
| 107 | 1.4.1.6 | **Requerimiento de Control de Acceso de Personas** | 124.5d | 2014-04-29 | 2014-10-28 |  | -161.62d | 0d |  |  | 1028h |  |
| 108 | 1.4.1.6.1 | RFN-Verificar identidad | 13d | 2014-04-29 | 2014-05-19 | 91 | -133.12d | 0d | start no earlier than 2014-02-24 | Programador 1 | 104h | RE |
| 109 | 1.4.1.6.2 | RFN-Registrar persona | 11d | 2014-05-20 | 2014-06-03 | 108 | -156.12d | 0d | start no earlier than 2014-02-24 | Programador 1 | 88h | RE |
| 110 | 1.4.1.6.3 | RFN-Editar persona | 11d | 2014-06-04 | 2014-06-18 | 109 | -156.12d | 0d | start no earlier than 2014-02-24 | Programador 1 | 88h | RE |
| 111 | 1.4.1.6.4 | RFN-Eliminar persona | 5.5d | 2014-06-19 | 2014-06-27 | 110 | -156.12d | 0d | start no earlier than 2014-02-24 | Programador 1 | 44h | RE |
| 112 | 1.4.1.6.5 | RFN-Consulta de persona | 11d | 2014-06-27 | 2014-07-15 | 111 | -156.12d | 0d |  | Programador 1 | 88h | RE |
| 113 | 1.4.1.6.6 | RFN-Exportación de personas | 13d | 2014-07-15 | 2014-08-01 | 112 | -156.12d | 0d |  | Programador 1 | 104h | RE |
| 114 | 1.4.1.6.7 | RFN-Importación de personas | 19d | 2014-08-01 | 2014-08-29 | 113 | -156.12d | 0d |  | Programador 1 | 152h | RE |
| 115 | 1.4.1.6.8 | RFN-Registrar ingreso | 13d | 2014-08-29 | 2014-09-17 | 114 | -156.12d | 0d |  | Programador 1 | 104h |  |
| 116 | 1.4.1.6.9 | RFN-Registrar egreso | 13d | 2014-09-17 | 2014-10-06 | 115 | -156.12d | 0d |  | Programador 1 | 104h | NC |
| 117 | 1.4.1.6.10 | RFN-Exportación registro de ingresos y egresos | 9.5d | 2014-10-06 | 2014-10-20 | 116 | -156.12d | 0d |  | Programador 1 | 76h | NC |
| 118 | 1.4.1.6.11 | RFN-Importación de registro de ingresos y egresos | 9.5d | 2014-10-15 | 2014-10-28 | 144 | -161.62d | 0d |  | Programador 4 | 76h | NC |
| 119 | 1.4.1.7 | **Requerimiento de Control de Acceso de Vehículos** | 95.5d | 2014-04-14 | 2014-09-03 |  | -153.62d | 0d |  |  | 764h | RE |
| 120 | 1.4.1.7.1 | RFN-Verificar vehículo | 13d | 2014-04-14 | 2014-05-07 | 95 | -130.62d | 0d | start no earlier than 2014-02-24 | Programador 2 | 104h | RE |
| 121 | 1.4.1.7.2 | RFN-Registrar vehículo | 7.5d | 2014-05-07 | 2014-05-16 | 120 | -130.62d | 0d | start no earlier than 2014-02-24 | Programador 2 | 60h | RE |
| 122 | 1.4.1.7.3 | RFN-Editar vehículo | 7.5d | 2014-05-19 | 2014-05-28 | 121 | -153.62d | 0d | start no earlier than 2014-02-24 | Programador 2 | 60h | RE |
| 123 | 1.4.1.7.4 | RFN-Eliminar vehículo | 5.5d | 2014-05-28 | 2014-06-04 | 122 | -153.62d | 0d | start no earlier than 2014-02-24 | Programador 2 | 44h | RE |
| 124 | 1.4.1.7.5 | RFN-Consulta de vehículo | 7.5d | 2014-06-05 | 2014-06-16 | 123 | -153.62d | 0d |  | Programador 2 | 60h | RE |
| 125 | 1.4.1.7.6 | RFN-Exportación de vehículo | 9.5d | 2014-06-16 | 2014-06-30 | 124 | -153.62d | 0d |  | Programador 2 | 76h | RE |
| 126 | 1.4.1.7.7 | RFN-Registrar ingreso | 13d | 2014-07-01 | 2014-07-18 | 125 | -153.62d | 0d |  | Programador 2 | 104h | RE |
| 127 | 1.4.1.7.8 | RFN-Registrar egreso | 13d | 2014-07-21 | 2014-08-06 | 126 | -153.62d | 0d |  | Programador 2 | 104h | RE |
| 128 | 1.4.1.7.9 | RFN-Exportación registro de ingresos y egresos | 9.5d | 2014-08-07 | 2014-08-21 | 127 | -153.62d | 0d |  | Programador 2 | 76h | RE |
| 129 | 1.4.1.7.10 | RFN-Importación de registro de ingresos y egresos | 9.5d | 2014-08-21 | 2014-09-03 | 128 | -124.12d | 0d |  | Programador 2 | 76h | RE |

| ID | WBS | Task | Duration | Start | Finish | Predecessors | Total slack | Free slack | Constraint | Resources | Work | Text1 |
| --- | --- | --- | --- | --- | --- | --- | --- | --- | --- | --- | --- | --- |
| 130 | 1.4.1.8 | **Requerimiento de Control de Productos** | 72.5d | 2014-07-04 | 2014-10-17 |  | -155.12d | 0d |  |  | 1044h |  |
| 131 | 1.4.1.8.1 | RFN-Verificar producto | 13d | 2014-07-04 | 2014-07-24 | 102 | -155.12d | 0d | start no earlier than 2014-02-24 | Programador 3 | 104h | RE |
| 132 | 1.4.1.8.2 | RFN-Registrar producto | 7.5d | 2014-07-24 | 2014-08-04 | 131 | -155.12d | 0d | start no earlier than 2014-02-24 | Programador 3 | 60h | RE |
| 133 | 1.4.1.8.3 | RFN-Registrar materia prima | 7.5d | 2014-08-05 | 2014-08-14 | 132 | -155.12d | 0d | start no earlier than 2014-02-24 | Programador 3 | 60h | RE |
| 134 | 1.4.1.8.4 | RFN-Eliminar producto o materia prima | 5.5d | 2014-08-14 | 2014-08-22 | 133 | -155.12d | 0d | start no earlier than 2014-02-24 | Programador 3 | 44h | RE |
| 135 | 1.4.1.8.5 | RFN-Consultar de producto | 5.5d | 2014-08-25 | 2014-09-01 | 134 | -155.12d | 0d |  | Programador 3 | 44h | RE |
| 136 | 1.4.1.8.6 | RFN-Consultar de materia prima | 5.5d | 2014-09-01 | 2014-09-08 | 135 | -155.12d | 0d |  | Programador 3 | 44h |  |
| 137 | 1.4.1.8.7 | RFN-Exportación de productos o materia prima | 9.5d | 2014-09-09 | 2014-09-22 | 136 | -155.12d | 0d |  | Programador 3 | 76h | NC |
| 138 | 1.4.1.8.8 | RFN-Importación de productos o materia prima | 13d | 2014-09-22 | 2014-10-09 | 137 | -155.12d | 0d |  | Programador 3 | 104h | NC |
| 139 | 1.4.1.8.9 | RFN-Registrar orden de ingreso o egreso | 5.5d | 2014-10-09 | 2014-10-17 | 138 | -155.12d | 0d |  | Programador 3 | 44h | NC |
| 140 | 1.4.1.8.10 | RFN-Registrar ingreso de producto | 13d | 2014-08-21 | 2014-09-09 | 128 | -153.62d | 0d |  | Programador 2 | 104h |  |
| 141 | 1.4.1.8.11 | RFN-Registrar ingreso de materia prima | 13d | 2014-09-09 | 2014-09-26 | 140 | -153.62d | 0d |  | Programador 2 | 104h | NC |
| 142 | 1.4.1.8.12 | RFN-Registrar egreso de producto | 13d | 2014-09-26 | 2014-10-16 | 141 | -153.62d | 0d |  | Programador 2 | 104h | NC |
| 143 | 1.4.1.8.13 | RFN-Exportación registro de ingresos y egresos | 9.5d | 2014-09-17 | 2014-09-30 | 156 | -161.62d | 0d |  | Programador 4 | 76h | NC |
| 144 | 1.4.1.8.14 | RFN-Importación de registro de ingresos y egresos | 9.5d | 2014-09-30 | 2014-10-14 | 143 | -138.62d | 0d |  | Programador 4 | 76h | NC |
| 145 | 1.4.1.9 | **Requerimiento de registro de incidentes** | 5.5d | 2014-04-28 | 2014-05-07 |  | -161.62d | 0d |  |  | 44h | RE |
| 146 | 1.4.1.9.1 | RFN-Registrar incidentes | 5.5d | 2014-04-28 | 2014-05-07 | 106 | -138.62d | 0d | start no earlier than 2014-02-24 | Programador 4 | 44h | RE |
| 147 | 1.4.1.10 | **Requerimiento de Cargas Iniciales** | 27d | 2014-05-08 | 2014-06-13 |  | -161.62d | 0d |  |  | 216h | RE |
| 148 | 1.4.1.10.1 | RFN-Cargas iniciales de datos maestros | 3d | 2014-05-08 | 2014-05-12 | 146 | -161.62d | 0d |  | Programador 4 | 24h | RE |
| 149 | 1.4.1.10.2 | RFN-Cargas iniciales de transacciones | 5d | 2014-05-13 | 2014-05-19 | 148 | -161.62d | 0d |  | Programador 4 | 40h | RE |
| 150 | 1.4.1.10.3 | RFN-Registro de eventos en las cargas | 19d | 2014-05-20 | 2014-06-13 | 149 | -161.62d | 0d |  | Programador 4 | 152h | RE |
| 151 | 1.4.2 | **Desarrollo Importadores y sincronización** | 64d | 2014-06-16 | 2014-09-16 |  | -161.62d | 0d |  |  | 512h |  |
| 152 | 1.4.2.1 | Proceso de interfaz con módulo de RRHH en Tango | 13d | 2014-06-16 | 2014-07-03 | 150 | -161.62d | 0d | start no earlier than 2014-02-17 | Programador 4 | 104h | RE |
| 153 | 1.4.2.2 | Proceso de interfaz con módulo de Producción en Tango | 9.5d | 2014-07-04 | 2014-07-18 | 152 | -161.62d | 0d | start no earlier than 2014-02-17 | Programador 4 | 76h | RE |
| 154 | 1.4.2.3 | Proceso de interfaz con módulo de Logística en Tango | 9.5d | 2014-07-18 | 2014-07-31 | 153 | -161.62d | 0d | start no earlier than 2014-02-17 | Programador 4 | 76h | RE |
| 155 | 1.4.2.4 | Proceso de sincronización de base de datos centralizada | 13d | 2014-08-01 | 2014-08-20 | 154 | -161.62d | 0d | start no earlier than 2014-02-17 | Programador 4 | 104h | RE |
| 156 | 1.4.2.5 | Registro de eventos de integración | 19d | 2014-08-21 | 2014-09-16 | 155 | -161.62d | 0d |  | Programador 4 | 152h |  |

| ID | WBS | Task | Duration | Start | Finish | Predecessors | Total slack | Free slack | Constraint | Resources | Work | Text1 |
| --- | --- | --- | --- | --- | --- | --- | --- | --- | --- | --- | --- | --- |
| 157 | 1.4.3 | **Pruebas** | 95d | 2014-10-28 | 2015-03-19 |  | -161.62d | 0d |  |  | 2400h | NC |
| 158 | 1.4.3.1 | **Testing en desarrollo** | 56d | 2014-10-28 | 2015-01-23 |  | -161.62d | 0d |  |  | 896h | NC |
| 159 | 1.4.3.1.1 | Testing de la aplicación | 30d | 2014-10-28 | 2014-12-11 | 84 | -161.62d | 0d |  | Analista Funcional; Tester | 480h | NC |
| 160 | 1.4.3.1.2 | Interfaz con Tango | 10d | 2014-12-11 | 2014-12-30 | 84, 151, 159 | -161.62d | 0d |  | Analista Funcional; Tester | 160h | NC |
| 161 | 1.4.3.1.3 | Revisión de sincronización con los sitios | 10d | 2014-12-30 | 2015-01-15 | 160 | -161.62d | 0d |  | Analista Funcional; Tester | 160h | NC |
| 162 | 1.4.3.1.4 | Reportes | 6d | 2015-01-15 | 2015-01-23 | 161 | -161.62d | 0d |  | Analista Funcional; Tester | 96h | NC |
| 163 | 1.4.3.2 | Corrección de incidencias | 30d | 2014-10-28 | 2014-12-11 | 84 | -135.62d | 0d | finish no earlier than 2014-11-26 | Programador 1; Programador 2; Programador 3; Programador 4 | 960h | NC |
| 164 | 1.4.3.3 | **Despliegue** | 11d | 2015-01-23 | 2015-02-09 |  | -161.62d | 0d |  |  | 176h | NC |
| 165 | 1.4.3.3.1 | **Despliegue in situ en Buenos Aires Oficina Central** | 5d | 2015-01-23 | 2015-01-30 |  | -161.62d | 0d |  |  | 80h | NC |
| 166 | 1.4.3.3.1.1 | Despliegue de todo la aplicación | 5d | 2015-01-23 | 2015-01-30 | 163, 158 | -161.62d | 0d | start no earlier than 2014-03-14 | Analista Funcional; Analista Técnico | 80h | NC |
| 167 | 1.4.3.3.2 | **Despliegue remoto de los clientes servidor** | 6d | 2015-01-30 | 2015-02-09 |  | -161.62d | 0d |  |  | 96h | NC |
| 168 | 1.4.3.3.2.1 | Despliegue del cliente servidor en Oficina Buenos Aires 2 | 1d | 2015-01-30 | 2015-02-02 | 166 | -161.62d | 0d |  | Analista Funcional | 8h | NC |
| 169 | 1.4.3.3.2.2 | Despliegue del cliente servidor en Planta Productora Santa Fe | 1d | 2015-01-30 | 2015-02-02 | 166 | -161.62d | 0d |  | Analista Técnico | 8h | NC |
| 170 | 1.4.3.3.2.3 | Despliegue del cliente servidor en Depósito 1 | 1d | 2015-02-02 | 2015-02-03 | 168 | -161.62d | 0d |  | Analista Funcional | 8h | NC |
| 171 | 1.4.3.3.2.4 | Despliegue del cliente servidor en Depósito 2 | 1d | 2015-02-02 | 2015-02-03 | 169 | -161.62d | 0d |  | Analista Técnico | 8h | NC |
| 172 | 1.4.3.3.2.5 | Despliegue del cliente servidor en Depósito 3 | 1d | 2015-02-03 | 2015-02-04 | 170 | -161.62d | 0d |  | Analista Funcional | 8h | NC |
| 173 | 1.4.3.3.2.6 | Despliegue del cliente servidor en Depósito 4 | 1d | 2015-02-03 | 2015-02-04 | 171 | -161.62d | 0d |  | Analista Técnico | 8h | NC |
| 174 | 1.4.3.3.2.7 | Despliegue del cliente servidor en Depósito 5 | 1d | 2015-02-04 | 2015-02-05 | 172 | -161.62d | 0d |  | Analista Funcional | 8h | NC |
| 175 | 1.4.3.3.2.8 | Despliegue del cliente servidor en Depósito 6 | 1d | 2015-02-04 | 2015-02-05 | 173 | -161.62d | 0d |  | Analista Técnico | 8h | NC |
| 176 | 1.4.3.3.2.9 | Despliegue del cliente servidor en Depósito 7 | 1d | 2015-02-05 | 2015-02-06 | 174 | -161.62d | 0d |  | Analista Funcional | 8h | NC |
| 177 | 1.4.3.3.2.10 | Despliegue del cliente servidor en Depósito 8 | 1d | 2015-02-05 | 2015-02-06 | 175 | -161.62d | 0d |  | Analista Técnico | 8h | NC |
| 178 | 1.4.3.3.2.11 | Despliegue del cliente servidor en Depósito 9 | 1d | 2015-02-06 | 2015-02-09 | 176 | -161.62d | 0d |  | Analista Funcional | 8h | NC |
| 179 | 1.4.3.3.2.12 | Despliegue del cliente servidor en Depósito 10 | 1d | 2015-02-06 | 2015-02-09 | 177 | -161.62d | 0d |  | Analista Técnico | 8h | NC |
| 180 | 1.4.3.4 | Testing integral en Cliente | 15d | 2015-02-09 | 2015-03-02 | 164 | -161.62d | 0d | finish no earlier than 2014-03-19 | Analista Funcional; Analista Técnico | 240h | NC |
| 181 | 1.4.3.5 | Capacitación a usuarios: "Administradores funcionales" | 3d | 2015-03-02 | 2015-03-05 | 180 | -161.62d | 0d | finish no earlier than 2014-03-28 | Usuario referente del negocio; Analista Funcional | 48h | NC |
| 182 | 1.4.3.6 | Testing de usuarios | 10d | 2015-03-05 | 2015-03-19 | 181 | -161.62d | 0d | start no earlier than 2014-03-20 | Usuario referente del negocio | 80h | NC |

| ID | WBS | Task | Duration | Start | Finish | Predecessors | Total slack | Free slack | Constraint | Resources | Work | Text1 |
| --- | --- | --- | --- | --- | --- | --- | --- | --- | --- | --- | --- | --- |
| 183 | 1.5 | **Seguimiento y Avance** | 147d | 2014-07-04 | 2015-02-10 |  | 66d |  |  |  | 96h |  |
| 184 | 1.5.1 | Reunión de seguimiento y avance Construcción 1 | 1d | 2014-07-04 | 2014-07-07 | 89, 92, 96, 103 | 212d |  |  | Project Manager; Analista Funcional | 16h | RE |
| 185 | 1.5.2 | Reunión de seguimiento y avance Construcción 2 | 1d | 2014-10-28 | 2014-10-29 | 107, 119 | 133d |  |  | Project Manager; Analista Funcional | 16h | NC |
| 186 | 1.5.3 | Reunión de seguimiento y avance Construcción 3 | 1d | 2014-10-20 | 2014-10-20 | 130, 145 | 139.5d |  |  | Project Manager; Analista Funcional | 16h | NC |
| 187 | 1.5.4 | Reunión de seguimiento y avance Construcción 4 | 1d | 2014-09-17 | 2014-09-17 | 147, 151 | 161.5d |  |  | Project Manager; Analista Funcional | 16h | NC |
| 188 | 1.5.5 | Reunión de seguimiento y avance Pruebas 1 | 1d | 2015-01-23 | 2015-01-26 | 158 | 77d |  |  | Project Manager; Analista Funcional | 16h | NC |
| 189 | 1.5.6 | Reunión de seguimiento y avance Despliegue | 1d | 2015-02-09 | 2015-02-10 | 164 | 66d |  |  | Project Manager; Analista Funcional | 16h | NC |
| 190 | 1.6 | **Implementación** | 88.88d | 2014-03-24 | 2014-08-04 |  |  |  |  |  | 528h |  |
| 191 | 1.6.1 | Revisión técnica de la instalación en servidores | 15d | 2014-03-25 | 2014-04-15 | 29 | 485.5d |  | start no earlier than 2014-03-24 | Seguridad Informática | 120h | RE |
| 192 | 1.6.2 | Soporte instalación de servidores | 15d | 2014-03-25 | 2014-04-15 | 29 | 72.88d |  |  | Analista Técnico | 120h | RE |
| 193 | 1.6.3 | Validación técnica de la aplicación | 5d | 2015-02-09 | 2015-02-16 | 164 | -145.62d | 0d | start no earlier than 2014-03-27 | Seguridad Informática | 40h | NC |
| 194 | 1.6.4 | Soporte aplicación | 5d | 2015-02-09 | 2015-02-16 | 164 | -130.62d | 0d |  | Analista Técnico | 40h | NC |
| 195 | 1.6.5 | **Datos** | 229.5d | 2014-03-31 | 2015-03-09 |  | -145.62d | 0d |  |  | 112h |  |
| 196 | 1.6.5.1 | Carga de datos de roles y usuarios | 5d | 2014-03-31 | 2014-04-07 | 24 | 78.88d |  | start no earlier than 2014-03-25 | Seguridad Informática | 40h | RE |
| 197 | 1.6.5.2 | Carga de datos definitivos | 2d | 2015-02-16 | 2015-02-18 | 193, 22 | -145.62d | 0d | start no earlier than 2014-03-07 | Analista Funcional; Usuario referente del negocio | 32h | NC |
| 198 | 1.6.5.3 | Validación de carga de datos definitivos | 5d | 2015-03-02 | 2015-03-09 | 197, 180 | -153.62d | 0d |  | Usuario referente del negocio | 40h | NC |
| 199 | 1.6.6 | Presentación y aprobación final de la solución | 1d | 2015-03-19 | 2015-03-20 | 193, 198, 182 | -161.62d | 0d | start no earlier than 2014-04-04 | Analista Funcional; Project Manager | 16h | NC |
| 200 | 1.6.7 | **Capacitaciones** | 6d | 2015-03-20 | 2015-03-30 |  | -161.62d | 0d |  |  | 64h | NC |
| 201 | 1.6.7.1 | Capacitación a usuarios: "Infraestructura" | 2d | 2015-03-20 | 2015-03-24 | 199 | -157.62d | 0d |  | Analista Técnico | 16h | NC |
| 202 | 1.6.7.2 | Capacitación a usuarios: "Seguridad Informática" | 2d | 2015-03-20 | 2015-03-24 | 199 | -161.62d | 0d |  | Analista Funcional | 16h | NC |
| 203 | 1.6.7.3 | Capacitación a usuarios: "Trainers" BA | 2d | 2015-03-24 | 2015-03-26 | 202 | -161.62d | 0d |  | Analista Funcional | 16h | NC |
| 204 | 1.6.7.4 | Capacitación a usuarios: "Trainers" Santa Fe | 2d | 2015-03-26 | 2015-03-30 | 203 | -161.62d | 0d |  | Analista Funcional | 16h | NC |
| 205 | 1.6.8 | Go Live con conformidad de usuario | 1d | 2015-03-30 | 2015-03-31 | 200 | -161.62d | 0d |  | Analista Funcional; Project Manager | 16h | NC |
| 206 | 1.7 | **Soporte post-producción** | 31d | 2015-03-31 | 2015-05-13 |  | 0d |  |  |  | 480h | NC |
| 207 | 1.7.1 | Soporte post-producción de la solución | 30d | 2015-03-31 | 2015-05-12 | 205 | 0d |  |  | Analista Técnico; Analista Funcional | 480h | NC |
| 208 | 1.7.2 | Cierre | 1d | 2015-05-12 | 2015-05-13 | 207 | 0d |  | start no earlier than 2014-04-23 |  |  | NC |
