# Gantt2.0

Schedule from MS Project, 2015-04-12 to 2015-12-05, status date 2015-06-07, 5 hours a day, A marks actual dates.

## Calendars

- AsociateYa: Mon-Fri 09:00-13:00, 15:00-19:00; Sat-Sun off.

## Resources

| Resource | Group |
| --- | --- |
| Croci | ANALISTA FUNCIONAL |
| Budic | PROJECT MANAGER |
| Tiberti | ADMINISTRADOR DE BASE DE DATOS |
| Tiberti | DESAROLLADOR |
| Budic | TESTER |
| Croci | DISEÑADOR DE EXPERIENCIA DE USUARIO |
| Rodriguez | ARQUITECTO DE SOFTWARE |
| Tiberti | ADMINISTRADOR DEL ENTORNO DE DESARROLLO |
| Croci | DESAROLLADOR |
| Budic | DESAROLLADOR |
| Rodriguez | DESAROLLADOR |
| Budic | ANALISTA FUNCIONAL |
| Rodriguez | PROJECT CONTROLLER |

## Schedule

| ID | WBS | Task | Duration | Start | Finish | Predecessors | Complete | Remaining | Total slack | Free slack | Resources | Work | Actual work |
| --- | --- | --- | --- | --- | --- | --- | --- | --- | --- | --- | --- | --- | --- |
| 1 | 1 | **Análisis** | 15d | 2015-04-12 A | 2015-05-17 |  | 90% | 1.56d | 86.4d |  |  | 124h | 115h |
| 2 | 1.1 | **Riesgos** | 2.4d | 2015-04-12 A | 2015-04-18 A |  | 100% |  |  |  |  | 39h | 39h |
| 3 | 1.1.1 | Identificar los riegos | 2h | 2015-04-12 A | 2015-04-12 A |  | 100% |  |  |  | Budic; Tiberti; Rodriguez; Croci | 11h | 11h |
| 4 | 1.1.2 | Analizar los riegos | 3h | 2015-04-12 A | 2015-04-12 A | 3 | 100% |  |  |  | Budic; Tiberti; Rodriguez; Croci | 12h | 12h |
| 5 | 1.1.3 | Planificación de riesgos | 6h | 2015-04-12 A | 2015-04-18 A | 4 | 100% |  |  |  | Budic; Rodriguez | 14h | 14h |
| 6 | 1.1.4 | Completar tabla de riesgos | 1h | 2015-04-18 A | 2015-04-18 A | 5 | 100% |  |  |  | Budic; Rodriguez | 2h | 2h |
| 7 | 1.2 | **Planificación** | 9d | 2015-04-19 A | 2015-05-10 |  | 82% | 1.64d | 88.4d |  |  | 54h | 45h |
| 8 | 1.2.1 | Identificar las tareas para cada entregable | 8h | 2015-04-19 A | 2015-04-25 | 21 | 50% | 4h | 0.4d | 0d | Budic | 8h | 4h |
| 9 | 1.2.2 | Definir las precedencias | 4h | 2015-04-25 A | 2015-04-26 | 8 | 50% | 2h | 0.4d | 0d | Budic | 4h | 2h |
| 10 | 1.2.3 | Estimar los tiempos de cada tarea | 4h | 2015-04-26 A | 2015-04-28 | 9 | 50% | 2h | 94d |  | Budic; Tiberti; Croci; Rodriguez | 14h | 11h |
| 11 | 1.2.4 | Calcular el camino crítico | 3h | 2015-05-10 A | 2015-05-10 A | 12 | 100% |  |  |  | Rodriguez | 3h | 3h |
| 12 | 1.2.5 | Realizar diagrama de Gantt | 25h | 2015-04-28 A | 2015-05-10 A | 10 | 100% |  |  |  | Rodriguez | 25h | 25h |
| 13 | 1.3 | **Roles y Responsabilidades** | 1d | 2015-05-10 A | 2015-05-12 A |  | 100% |  |  |  |  | 7h | 7h |
| 14 | 1.3.1 | Identificar roles | 2h | 2015-05-10 A | 2015-05-10 A | 12 | 100% |  |  |  | Budic; Croci | 4h | 4h |
| 15 | 1.3.2 | Asignar responsabilidades a los roles | 3h | 2015-05-10 A | 2015-05-12 A | 14 | 100% |  |  |  | Budic | 3h | 3h |
| 16 | 1.4 | **Habilidades y Competencias** | 1.2d | 2015-05-12 A | 2015-05-16 A |  | 100% |  |  |  |  | 6h | 6h |
| 17 | 1.4.1 | Asignar competencias a los roles | 6h | 2015-05-12 A | 2015-05-16 A | 15 | 100% |  |  |  | Budic | 6h | 6h |
| 18 | 1.5 | **Comunicación** | 0.4d | 2015-05-16 A | 2015-05-17 A |  | 100% |  |  |  |  | 2h | 2h |
| 19 | 1.5.1 | Establecer canales de comunicación entre roles | 2h | 2015-05-16 A | 2015-05-17 A | 17 | 100% |  |  |  | Budic | 2h | 2h |
| 20 | 1.6 | **WBS** | 1.6d | 2015-04-18 A | 2015-04-19 A |  | 100% |  |  |  |  | 16h | 16h |
| 21 | 1.6.1 | Definir entregables | 8h | 2015-04-18 A | 2015-04-19 A | 6 | 100% |  |  |  | Budic; Croci | 16h | 16h |
| 22 | 2 | **Diseño** | 27.8d | 2015-04-25 A | 2015-06-28 |  | 36% | 17.89d | 62.2d |  |  | 197h | 78.5h |
| 23 | 2.1 | **Casos de Uso** | 16d | 2015-05-12 A | 2015-06-20 |  | 44% | 8.99d | 7.4d |  |  | 104h | 54.5h |
| 24 | 2.1.1 | Identificar actores y funcionalidades | 25h | 2015-05-12 A | 2015-05-24 | 21, 13 | 75% | 6.25h | 0.8d | 0d | Croci; Budic | 50h | 37.5h |
| 25 | 2.1.2 | Describir casos de uso | 48h | 2015-05-24 A | 2015-06-14 | 24 | 25% | 36h | 1.2d | 0d | Croci; Budic | 50h | 14h |
| 26 | 2.1.3 | Describir las relaciones entre los actores y casos de uso | 4h | 2015-06-14 A | 2015-06-20 | 24, 25 | 75% | 1h | 7.4d | 0.6d | Croci; Budic | 4h | 3h |

| ID | WBS | Task | Duration | Start | Finish | Predecessors | Complete | Remaining | Total slack | Free slack | Resources | Work | Actual work |
| --- | --- | --- | --- | --- | --- | --- | --- | --- | --- | --- | --- | --- | --- |
| 27 | 2.2 | **DER** | 11.6d | 2015-05-24 A | 2015-06-21 |  | 36% | 7.38d | 6.8d |  |  | 38h | 18h |
| 28 | 2.2.1 | Definir entidades y sus atributos | 8h | 2015-05-24 A | 2015-05-29 | 24 | 50% | 4h | 8d | 0d | Tiberti; Croci; Rodriguez; Budic | 24h | 14h |
| 29 | 2.2.2 | Describir las relaciones entre las entidades | 8h | 2015-05-29 A | 2015-06-18 | 28 | 50% | 4h | 6.8d | 0d | Tiberti; Croci | 8h | 4h |
| 30 | 2.2.3 | Normalizar DER | 6h | 2015-06-18 | 2015-06-21 | 29 |  |  | 6.8d | 0d | Tiberti | 6h |  |
| 31 | 2.3 | **Maqueta del Front-End** | 2d | 2015-06-21 | 2015-06-26 |  |  |  | 63.6d | 11.6d |  | 10h |  |
| 32 | 2.3.1 | Diseñar disposición de elementos estéticamente | 10h | 2015-06-21 | 2015-06-26 | 30 |  |  | 63.6d |  | Croci | 10h |  |
| 33 | 2.4 | **Documento De Arquitectura** | 1.6d | 2015-04-25 A | 2015-04-27 |  | 75% | 0.4d | 0d |  |  | 8h | 6h |
| 34 | 2.4.1 | Definir arquitectura de software | 8h | 2015-04-25 A | 2015-04-27 | 8 | 75% | 2h | 0d |  | Rodriguez | 8h | 6h |
| 35 | 2.5 | **Especificación de la BD** | 3.4d | 2015-06-21 | 2015-06-28 |  |  |  | 6.8d |  |  | 37h |  |
| 36 | 2.5.1 | Diseño de tablas de la BD | 6h | 2015-06-21 | 2015-06-22 | 30, 26 |  |  | 6.8d | 0d | Tiberti; Croci; Rodriguez | 18h |  |
| 37 | 2.5.2 | Definir tipo y volumen de datos | 3h | 2015-06-25 | 2015-06-27 | 38 |  |  | 6.8d | 0d | Tiberti | 3h |  |
| 38 | 2.5.3 | Relaciones entre las tablas de la BD | 3h | 2015-06-22 | 2015-06-25 | 36 |  |  | 6.8d | 0d | Tiberti | 3h |  |
| 39 | 2.5.4 | Definir políticas de seguridad e integridad | 5h | 2015-06-27 | 2015-06-28 | 37 |  |  | 6.8d | 0d | Tiberti; Croci; Rodriguez | 13h |  |
| 40 | 3 | **Desarrollo** | 90d | 2015-04-27 | 2015-11-23 |  |  |  | 0d |  |  | 1653h |  |
| 41 | 3.1 | Capacitación en HTML | 120h | 2015-04-27 | 2015-06-22 | 34 |  |  | 0d |  | Tiberti | 120h |  |
| 42 | 3.2 | Capacitación en Java | 120h | 2015-04-27 | 2015-06-22 | 34 |  |  | 4d | 0d | Croci | 120h |  |
| 43 | 3.3 | Capacitación en CSS | 120h | 2015-04-27 | 2015-06-22 | 34 |  |  | 70.2d |  | Budic | 120h |  |
| 44 | 3.4 | Capacitación en PHP | 120h | 2015-04-27 | 2015-06-22 | 34 |  |  | 8d | 0d | Rodriguez | 120h |  |
| 45 | 3.5 | Escribir código de Plantillas | 220h | 2015-06-22 | 2015-10-04 | 41 |  |  | 0d |  | Budic | 220h |  |
| 46 | 3.6 | Escribir código JavaScript | 200h | 2015-06-22 | 2015-09-26 | 42 |  |  | 4d |  | Croci | 200h |  |
| 47 | 3.7 | Escribir código PHP | 180h | 2015-06-22 | 2015-09-14 | 44 |  |  | 8d |  | Rodriguez | 185h |  |
| 48 | 3.8 | Escribir script de la base de datos | 180h | 2015-06-28 | 2015-09-20 | 39 |  |  | 6.8d | 0d | Tiberti; Rodriguez | 220h |  |
| 49 | 3.9 | Revisión de pares de Plantillas | 70h | 2015-10-04 | 2015-11-21 | 45, 46, 47 |  |  | 6.2d |  | Croci; Rodriguez | 100h |  |
| 50 | 3.10 | Revisión de pares de JavaScript | 40h | 2015-10-04 | 2015-10-24 | 46, 45, 47 |  |  | 0d |  | Tiberti; Budic | 80h |  |
| 51 | 3.11 | Revisión de pares de la base de datos | 60h | 2015-09-26 | 2015-11-07 | 48 |  |  | 7.4d | 0d | Croci; Budic | 60h |  |
| 52 | 3.12 | Revisión de pares de PHP | 70h | 2015-10-24 | 2015-11-23 | 50 |  |  | 0d |  | Budic; Croci | 80h |  |

| ID | WBS | Task | Duration | Start | Finish | Predecessors | Total slack | Free slack | Constraint | Resources | Work |
| --- | --- | --- | --- | --- | --- | --- | --- | --- | --- | --- | --- |
| 53 | 3.13 | **Promoción** | 3.6d | 2015-07-22 | 2015-08-01 |  | 52d |  |  |  | 28h |
| 54 | 3.13.1 | Realizar presentación comercial | 10h | 2015-07-26 | 2015-08-01 | 55 | 54.2d |  |  | Croci; Budic | 20h |
| 55 | 3.13.2 | Realizar poster comercial | 8h | 2015-07-22 | 2015-07-26 | 31 | 52d | 0d | start no earlier than 2015-07-22 | Croci | 8h |
| 56 | 4 | **Testing** | 55.2d | 2015-06-21 | 2015-10-26 |  | 16.2d |  |  |  | 82h |
| 57 | 4.1 | Armar el plan de pruebas | 8h | 2015-06-28 | 2015-07-03 | 58 | 66.4d |  |  | Croci; Budic | 16h |
| 58 | 4.2 | Definir los casos de prueba | 14h | 2015-06-21 | 2015-06-28 | 26, 30 | 63.2d | 0d |  | Croci; Budic | 16h |
| 59 | 4.3 | Ejecutar los casos de prueba | 40h | 2015-10-04 | 2015-10-24 | 45, 46, 47, 48 | 12d | 0d |  | Budic | 40h |
| 60 | 4.4 | Documentar resultados de las pruebas | 10h | 2015-10-24 | 2015-10-26 | 59 | 12d |  |  | Budic | 10h |
| 61 | 5 | **Manuales** | 0.6d | 2015-11-07 | 2015-11-07 |  | 7.4d |  |  |  | 8h |
| 62 | 5.1 | Redactar manual de instalación | 3h | 2015-11-07 | 2015-11-07 | 50, 51, 58 | 7.4d |  |  | Tiberti | 8h |
| 63 | 6 | **Finalización del Proyecto** | 4.2d | 2015-11-23 | 2015-12-05 |  | 0d |  |  |  | 90h |
| 64 | 6.1 | Reflexionar sobre la experiencia realizada | 3h | 2015-11-23 | 2015-11-26 | 62, 60, 6, 12, 15, 17, 19, 21, 26, 30, 32, 34, 39, 52, 55 | 0d |  |  | Tiberti; Croci; Rodriguez; Budic | 24h |
| 65 | 6.2 | Analizar errores cometidos | 6h | 2015-11-26 | 2015-11-29 | 64 | 0d |  |  | Tiberti; Croci; Rodriguez; Budic | 48h |
| 66 | 6.3 | Documentación de cierre de proyecto | 6h | 2015-11-29 | 2015-11-30 | 65 | 0d |  |  | Croci; Budic | 12h |
| 67 | 6.4 | Cerrar el proyecto | 6h | 2015-11-30 | 2015-12-05 | 66 | 0d |  |  | Budic | 6h |
