# Gantt AY Contingencia 2

Schedule from MS Project, 2015-04-12 to 2015-11-28, status date 2015-06-07, 24 hours a day, A marks actual dates.

## Calendars

- AsociateYa: Mon-Fri 09:00-13:00, 15:00-19:00; Sat-Sun off.
- AsociateYaContingencia: Mon-Fri 09:00-13:00, 15:00-19:00; Sat-Sun off.

## Resources

| Resource | Group |
| --- | --- |
| Tiberti-ANALISTA FUNCIONAL | ANALISTA FUNCIONAL |
| Budic-PROJECT MANAGER | PROJECT MANAGER |
| Tiberti-ADMINISTRADOR DE BASE DE DATOS | ADMINISTRADOR DE BASE DE DATOS |
| Tiberti-DESAROLLADOR | DESAROLLADOR |
| Budic-TESTER | TESTER |
| Croci-DISEÑADOR DE EXPERIENCIA DE USUARIO | DISEÑADOR DE EXPERIENCIA DE USUARIO |
| Rodriguez-ARQUITECTO DE SOFTWARE | ARQUITECTO DE SOFTWARE |
| Tiberti-ADMINISTRADOR DEL ENTORNO DE DESARROLLO | ADMINISTRADOR DEL ENTORNO DE DESARROLLO |
| Croci-DESAROLLADOR | DESAROLLADOR |
| Budic-DESAROLLADOR | DESAROLLADOR |
| Rodriguez-DESAROLLADOR | DESAROLLADOR |
| Budic-ANALISTA FUNCIONAL | ANALISTA FUNCIONAL |
| Rodriguez-PROJECT CONTROLLER | PROJECT CONTROLLER |
| Tiberti-TESTER | TESTER |
| Tiberti-ANALISTA LEGAL | ANALISTA LEGAL |

## Schedule

| ID | WBS | Task | Duration | Start | Finish | Predecessors | Complete | Calendar | Resources | Work | Actual work |
| --- | --- | --- | --- | --- | --- | --- | --- | --- | --- | --- | --- |
| 1 | 1 | **Análisis** | 3.29d | 2015-04-12 A | 2015-06-07 A |  | 100% |  |  | 127h | 127h |
| 2 | 1.1 | **Riesgos** | 0.71d | 2015-04-12 A | 2015-04-25 A |  | 100% |  |  | 39h | 39h |
| 3 | 1.1.1 | Identificar los riegos | 2h | 2015-04-12 A | 2015-04-12 A |  | 100% |  | Budic-PROJECT MANAGER; Tiberti-ADMINISTRADOR DE BASE DE DATOS; Rodriguez-ARQUITECTO DE SOFTWARE; Rodriguez-PROJECT CONTROLLER; Budic-ANALISTA FUNCIONAL; Croci-DESAROLLADOR | 11h | 11h |
| 4 | 1.1.2 | Analizar los riegos | 3h | 2015-04-12 A | 2015-04-18 A | 3 | 100% |  | Budic-PROJECT MANAGER; Tiberti-ADMINISTRADOR DE BASE DE DATOS; Rodriguez-ARQUITECTO DE SOFTWARE; Rodriguez-PROJECT CONTROLLER; Budic-ANALISTA FUNCIONAL; Croci-DESAROLLADOR | 12h | 12h |
| 5 | 1.1.3 | Planificación de riesgos | 6h | 2015-04-18 A | 2015-04-25 A | 4 | 100% |  | Budic-PROJECT MANAGER; Rodriguez-PROJECT CONTROLLER; Budic-ANALISTA FUNCIONAL | 14h | 14h |
| 6 | 1.1.4 | Completar tabla de riesgos | 1h | 2015-04-25 A | 2015-04-25 A | 5 | 100% |  | Budic-PROJECT MANAGER; Rodriguez-PROJECT CONTROLLER | 2h | 2h |
| 7 | 1.2 | **Planificación** | 1.62d | 2015-05-02 A | 2015-05-30 A |  | 100% |  |  | 57h | 57h |
| 8 | 1.2.1 | Identificar las tareas para cada entregable | 8h | 2015-05-02 A | 2015-05-10 A | 21 | 100% |  | Budic-PROJECT MANAGER | 8h | 8h |
| 9 | 1.2.2 | Definir las precedencias | 4h | 2015-05-10 A | 2015-05-16 A | 8 | 100% |  | Budic-PROJECT MANAGER | 4h | 4h |
| 10 | 1.2.3 | Estimar los tiempos de cada tarea | 6h | 2015-05-16 A | 2015-05-17 A | 9 | 100% |  | Budic-PROJECT MANAGER; Tiberti-ADMINISTRADOR DE BASE DE DATOS; Tiberti-ADMINISTRADOR DEL ENTORNO DE DESARROLLO; Tiberti-ANALISTA FUNCIONAL; Rodriguez-ARQUITECTO DE SOFTWARE; Budic-TESTER; Croci-DISEÑADOR DE EXPERIENCIA DE USUARIO | 17h | 17h |
| 11 | 1.2.4 | Calcular el camino crítico | 3h | 2015-05-30 A | 2015-05-30 A | 12 | 100% |  | Rodriguez-PROJECT CONTROLLER | 3h | 3h |
| 12 | 1.2.5 | Realizar diagrama de Gantt | 25h | 2015-05-17 A | 2015-05-26 A | 10 | 100% | AsociateYaContingencia | Rodriguez-PROJECT CONTROLLER | 25h | 25h |
| 13 | 1.3 | **Roles y Responsabilidades** | 0.21d | 2015-05-30 A | 2015-05-31 A |  | 100% |  |  | 7h | 7h |
| 14 | 1.3.1 | Identificar roles | 2h | 2015-05-30 A | 2015-05-30 A | 12 | 100% |  | Budic-PROJECT MANAGER; Tiberti-ANALISTA FUNCIONAL | 4h | 4h |
| 15 | 1.3.2 | Asignar responsabilidades a los roles | 3h | 2015-05-30 A | 2015-05-31 A | 14 | 100% |  | Budic-PROJECT MANAGER | 3h | 3h |
| 16 | 1.4 | **Habilidades y Competencias** | 0.35d | 2015-05-31 A | 2015-06-07 A |  | 100% |  |  | 6h | 6h |
| 17 | 1.4.1 | Asignar competencias a los roles | 6h | 2015-05-31 A | 2015-06-07 A | 15 | 100% |  | Budic-PROJECT MANAGER | 6h | 6h |
| 18 | 1.5 | **Comunicación** | 0.08d | 2015-06-07 A | 2015-06-07 A |  | 100% |  |  | 2h | 2h |
| 19 | 1.5.1 | Establecer canales de comunicación entre roles | 2h | 2015-06-07 A | 2015-06-07 A | 17 | 100% |  | Budic-PROJECT MANAGER | 2h | 2h |
| 20 | 1.6 | **WBS** | 0.44d | 2015-04-25 A | 2015-05-02 A |  | 100% |  |  | 16h | 16h |
| 21 | 1.6.1 | Definir entregables | 8h | 2015-04-25 A | 2015-05-02 A | 6 | 100% |  | Budic-PROJECT MANAGER; Tiberti-ANALISTA FUNCIONAL | 16h | 16h |
| 22 | 2 | **Diseño** | 7.12d | 2015-05-10 A | 2015-09-13 A |  | 100% |  |  | 203h | 203h |
| 23 | 2.1 | **Casos de Uso** | 4.94d | 2015-05-31 A | 2015-08-29 A |  | 100% |  |  | 110h | 110h |
| 24 | 2.1.1 | Identificar actores y funcionalidades | 25h | 2015-05-31 A | 2015-06-27 A | 21, 13 | 100% |  | Tiberti-ANALISTA FUNCIONAL; Budic-ANALISTA FUNCIONAL | 50h | 50h |
| 25 | 2.1.2 | Describir casos de uso | 48h | 2015-06-27 A | 2015-08-15 A | 24 | 100% |  | Tiberti-ANALISTA FUNCIONAL; Budic-PROJECT MANAGER | 50h | 50h |
| 26 | 2.1.3 | Describir las relaciones entre los actores y casos de uso | 9h | 2015-08-15 A | 2015-08-29 A | 24, 25 | 100% |  | Tiberti-ANALISTA FUNCIONAL; Budic-ANALISTA FUNCIONAL | 10h | 10h |

| ID | WBS | Task | Duration | Start | Finish | Predecessors | Complete | Remaining | Total slack | Calendar | Resources | Work | Actual work |
| --- | --- | --- | --- | --- | --- | --- | --- | --- | --- | --- | --- | --- | --- |
| 27 | 2.2 | **DER** | 2.77d | 2015-06-27 A | 2015-08-15 A |  | 100% |  |  |  |  | 38h | 38h |
| 28 | 2.2.1 | Definir entidades y sus atributos | 8h | 2015-06-27 A | 2015-07-04 A | 24 | 100% |  |  |  | Tiberti-ADMINISTRADOR DE BASE DE DATOS; Tiberti-ANALISTA FUNCIONAL; Rodriguez-ARQUITECTO DE SOFTWARE; Budic-PROJECT MANAGER | 24h | 24h |
| 29 | 2.2.2 | Describir las relaciones entre las entidades | 8h | 2015-07-05 A | 2015-08-08 A | 28 | 100% |  |  |  | Tiberti-ADMINISTRADOR DE BASE DE DATOS; Tiberti-ANALISTA FUNCIONAL | 8h | 8h |
| 30 | 2.2.3 | Normalizar DER | 6h | 2015-08-09 A | 2015-08-15 A | 29 | 100% |  |  |  | Tiberti-ADMINISTRADOR DE BASE DE DATOS | 6h | 6h |
| 31 | 2.3 | **Maqueta del Front-End** | 0.52d | 2015-08-15 A | 2015-08-23 A |  | 100% |  |  |  |  | 10h | 10h |
| 32 | 2.3.1 | Diseñar disposición de elementos estéticamente | 10h | 2015-08-15 A | 2015-08-23 A | 30 | 100% |  |  |  | Croci-DISEÑADOR DE EXPERIENCIA DE USUARIO | 10h | 10h |
| 33 | 2.4 | **Documento De Arquitectura** | 0.44d | 2015-05-10 A | 2015-05-17 A |  | 100% |  |  |  |  | 8h | 8h |
| 34 | 2.4.1 | Definir arquitectura de software | 8h | 2015-05-10 A | 2015-05-17 A | 8 | 100% |  |  |  | Rodriguez-ARQUITECTO DE SOFTWARE | 8h | 8h |
| 35 | 2.5 | **Especificación de la BD** | 0.92d | 2015-08-29 A | 2015-09-13 A |  | 100% |  |  |  |  | 37h | 37h |
| 36 | 2.5.1 | Diseño de tablas de la BD | 6h | 2015-08-29 A | 2015-08-30 A | 30, 26 | 100% |  |  |  | Tiberti-ADMINISTRADOR DE BASE DE DATOS; Tiberti-ANALISTA FUNCIONAL; Rodriguez-ARQUITECTO DE SOFTWARE | 18h | 18h |
| 37 | 2.5.2 | Definir tipo y volumen de datos | 3h | 2015-09-05 A | 2015-09-06 A | 38 | 100% |  |  |  | Tiberti-ADMINISTRADOR DE BASE DE DATOS | 3h | 3h |
| 38 | 2.5.3 | Relaciones entre las tablas de la BD | 3h | 2015-08-30 A | 2015-09-05 A | 36 | 100% |  |  |  | Tiberti-ADMINISTRADOR DE BASE DE DATOS | 3h | 3h |
| 39 | 2.5.4 | Definir políticas de seguridad e integridad | 5h | 2015-09-06 A | 2015-09-13 A | 37 | 100% |  |  |  | Tiberti-ADMINISTRADOR DE BASE DE DATOS; Tiberti-ANALISTA FUNCIONAL; Rodriguez-ARQUITECTO DE SOFTWARE | 13h | 13h |
| 40 | 3 | **Desarrollo** | 9.77d? | 2015-05-17 A | 2015-11-07 |  | 98% | 0.17d? | 0d |  |  | 903h | 886.19h |
| 41 | 3.1 | **Capacitacion** | 6.21d? | 2015-05-17 A | 2015-09-05 A |  | 100% |  |  |  |  | 290h | 290h |
| 42 | 3.1.1 | Inicio Capacitación en HTML | 10h | 2015-05-17 A | 2015-05-30 A | 34 | 100% |  |  |  | Budic-DESAROLLADOR | 10h | 10h |
| 43 | 3.1.2 | Inicio Capacitación en CSS | 10h | 2015-05-17 A | 2015-05-30 A | 34 | 100% |  |  |  | Budic-DESAROLLADOR | 10h | 10h |
| 44 | 3.1.3 | Inicio Capacitación en PHP | 20h | 2015-05-17 A | 2015-06-07 A | 34 | 100% |  |  |  | Rodriguez-DESAROLLADOR; Croci-DESAROLLADOR | 40h | 40h |
| 45 | 3.1.4 | Capacitación en HTML | 20h | 2015-05-30 A | 2015-07-19 A | 42 | 100% |  |  |  | Budic-DESAROLLADOR | 20h | 20h |
| 46 | 3.1.5 | Capacitación en CSS | 20h | 2015-05-30 A | 2015-06-27 A | 43 | 100% |  |  |  | Budic-DESAROLLADOR | 20h | 20h |
| 47 | 3.1.6 | Capacitación en PHP | 70h | 2015-06-07 A | 2015-09-05 A | 44 | 100% |  |  |  | Rodriguez-DESAROLLADOR | 70h | 70h |
| 48 | 3.1.7 | Capacitacion Symfony | 61.97h? | 2015-06-07 A | 2015-08-23 A | 42, 43, 44 | 100% |  |  |  | Budic-DESAROLLADOR; Croci-DESAROLLADOR; Rodriguez-DESAROLLADOR; Tiberti-DESAROLLADOR | 120h | 120h |
| 49 | 3.2 | **Escribir código de Plantillas** | 8.08d? | 2015-05-30 A | 2015-10-18 A |  | 100% |  |  |  |  | 101h | 101h |
| 50 | 3.2.1 | Inscribirse al portal | 10h? | 2015-05-30 A | 2015-06-13 A | 42, 43 | 100% |  |  |  | Budic-DESAROLLADOR; Croci-DESAROLLADOR | 10h | 10h |
| 51 | 3.2.2 | Autenticarse como usuario | 10h? | 2015-06-13 A | 2015-07-12 A | 50 | 100% |  |  |  | Budic-DESAROLLADOR; Croci-DESAROLLADOR | 10h | 10h |
| 52 | 3.2.3 | Modificar Usuario | 8h? | 2015-07-12 A | 2015-07-19 A | 51 | 100% |  |  |  | Budic-DESAROLLADOR; Croci-DESAROLLADOR | 10h | 10h |
| 53 | 3.2.4 | Dar de baja Usuario | 6h? | 2015-07-19 A | 2015-07-26 A | 52 | 100% |  |  |  | Budic-DESAROLLADOR; Croci-DESAROLLADOR | 6h | 6h |
| 54 | 3.2.5 | Inscribirse como emprendedor | 7h? | 2015-08-09 A | 2015-08-16 A | 85 | 100% |  |  |  | Budic-DESAROLLADOR; Croci-DESAROLLADOR | 7h | 7h |
| 55 | 3.2.6 | Aprobar inscripción como emprendedor | 5h? | 2015-08-16 A | 2015-09-05 A | 54 | 100% |  |  |  | Budic-DESAROLLADOR; Croci-DESAROLLADOR | 5h | 5h |
| 56 | 3.2.7 | Aplicar para crear emprendimiento | 5h? | 2015-09-05 A | 2015-09-06 A | 55 | 100% |  |  |  | Budic-DESAROLLADOR; Croci-DESAROLLADOR | 5h | 5h |
| 57 | 3.2.8 | Aprobar emprendimiento | 5.03h? | 2015-09-06 A | 2015-09-08 A | 56 | 100% |  |  | AsociateYaContingencia | Budic-DESAROLLADOR; Croci-DESAROLLADOR | 6h | 6h |
| 58 | 3.2.9 | Buscar/filtrar emprendimientos | 5h? | 2015-09-08 A | 2015-09-12 A | 57 | 100% |  |  | AsociateYaContingencia | Budic-DESAROLLADOR; Croci-DESAROLLADOR | 5h | 5h |
| 59 | 3.2.10 | Responder a inversor | 3h? | 2015-09-26 A | 2015-09-26 A | 86 | 100% |  |  | AsociateYaContingencia | Budic-DESAROLLADOR | 3h | 3h |
| 60 | 3.2.11 | Asociacion a emprendimiento | 4h? | 2015-09-26 A | 2015-09-27 A | 59 | 100% |  |  | AsociateYaContingencia | Budic-DESAROLLADOR | 4h | 4h |
| 61 | 3.2.12 | Consultar información a emprendedor | 8h? | 2015-09-27 A | 2015-10-10 A | 60 | 100% |  |  | AsociateYaContingencia | Budic-DESAROLLADOR; Croci-DESAROLLADOR | 8h | 8h |
| 62 | 3.2.13 | Realizar Pago | 6h? | 2015-10-10 A | 2015-10-11 A | 61 | 100% |  |  | AsociateYaContingencia | Budic-DESAROLLADOR; Croci-DESAROLLADOR | 8h | 8h |
| 63 | 3.2.14 | Dar de baja emprendimiento (baja manual) | 6h? | 2015-10-11 A | 2015-10-17 A | 62 | 100% |  |  | AsociateYaContingencia | Budic-DESAROLLADOR; Croci-DESAROLLADOR | 8h | 8h |
| 64 | 3.2.15 | Cancelar emprendimiento (baja por tiempo) | 6h? | 2015-10-17 A | 2015-10-18 A | 63 | 100% |  |  | AsociateYaContingencia | Budic-DESAROLLADOR | 6h | 6h |

| ID | WBS | Task | Duration | Start | Finish | Predecessors | Complete | Remaining | Total slack | Calendar | Resources | Work | Actual work |
| --- | --- | --- | --- | --- | --- | --- | --- | --- | --- | --- | --- | --- | --- |
| 65 | 3.3 | **Escribir código PHP** | 8.56d? | 2015-06-07 A | 2015-11-06 |  | 96% | 0.32d? | 0d |  |  | 296h | 287.19h |
| 66 | 3.3.1 | Inscribirse al portal | 20h? | 2015-06-07 A | 2015-06-27 A | 44 | 100% |  |  |  | Croci-DESAROLLADOR; Rodriguez-DESAROLLADOR | 24h | 24h |
| 67 | 3.3.2 | Autenticarse como usuario | 15h? | 2015-07-04 A | 2015-07-18 A | 92 | 100% |  |  |  | Croci-DESAROLLADOR; Rodriguez-DESAROLLADOR | 18h | 18h |
| 68 | 3.3.3 | Modificar Usuario | 10h? | 2015-07-18 A | 2015-07-26 A | 67 | 100% |  |  |  | Croci-DESAROLLADOR; Rodriguez-DESAROLLADOR | 12h | 12h |
| 69 | 3.3.4 | Dar de baja Usuario | 10h? | 2015-07-26 A | 2015-08-08 A | 68 | 100% |  |  |  | Croci-DESAROLLADOR; Rodriguez-DESAROLLADOR | 12h | 12h |
| 70 | 3.3.5 | Inscribirse como emprendedor | 10h? | 2015-08-08 A | 2015-08-16 A | 69 | 100% |  |  |  | Croci-DESAROLLADOR; Rodriguez-DESAROLLADOR | 12h | 12h |
| 71 | 3.3.6 | Aprobar inscripción como emprendedor | 10h? | 2015-08-16 A | 2015-08-23 A | 70 | 100% |  |  |  | Croci-DESAROLLADOR; Rodriguez-DESAROLLADOR | 12h | 12h |
| 72 | 3.3.7 | Aplicar para crear emprendimiento | 10h? | 2015-08-23 A | 2015-09-05 A | 71 | 100% |  |  |  | Croci-DESAROLLADOR; Rodriguez-DESAROLLADOR | 12h | 12h |
| 73 | 3.3.8 | Aprobar emprendimiento | 8h? | 2015-09-12 A | 2015-09-13 A | 93 | 100% |  |  | AsociateYaContingencia | Croci-DESAROLLADOR; Rodriguez-DESAROLLADOR | 10h | 10h |
| 74 | 3.3.9 | Buscar/filtrar emprendimientos | 10h? | 2015-09-13 A | 2015-09-19 A | 73 | 100% |  |  | AsociateYaContingencia | Croci-DESAROLLADOR; Rodriguez-DESAROLLADOR | 13h | 13h |
| 75 | 3.3.10 | Responder a inversor | 8h? | 2015-09-19 A | 2015-09-20 A | 74 | 100% |  |  | AsociateYaContingencia | Croci-DESAROLLADOR; Rodriguez-DESAROLLADOR | 10h | 10h |
| 76 | 3.3.11 | Asociar a emprendimiento | 15h? | 2015-09-20 A | 2015-09-26 A | 75 | 100% |  |  | AsociateYaContingencia | Croci-DESAROLLADOR; Rodriguez-DESAROLLADOR | 25h | 25h |
| 77 | 3.3.12 | Consultar información a emprendedor | 10h? | 2015-09-27 A | 2015-10-03 A | 94 | 100% |  |  | AsociateYaContingencia | Croci-DESAROLLADOR; Rodriguez-DESAROLLADOR | 13h | 13h |
| 78 | 3.3.13 | Realizar Pago | 42.01h? | 2015-10-03 A | 2015-10-17 A | 77 | 100% |  |  | AsociateYaContingencia | Croci-DESAROLLADOR; Rodriguez-DESAROLLADOR | 62h | 62h |
| 79 | 3.3.14 | Dar de baja empremdimiento (baja manual) | 20h? | 2015-10-17 A | 2015-10-24 A | 78 | 100% |  |  | AsociateYaContingencia | Croci-DESAROLLADOR; Rodriguez-DESAROLLADOR | 24h | 24h |
| 80 | 3.3.15 | Cancelar emprendimiento (baja por tiempo) | 24.99h? | 2015-10-24 A | 2015-11-01 A | 79 | 100% |  |  | AsociateYaContingencia | Rodriguez-DESAROLLADOR; Croci-DESAROLLADOR | 25h | 25h |
| 81 | 3.3.16 | Presentar estado de resultados | 11.01h? | 2015-11-01 A | 2015-11-06 | 80 | 20% | 8.81h? | 0d | AsociateYaContingencia | Croci-DESAROLLADOR; Rodriguez-DESAROLLADOR | 12h | 3.19h |
| 82 | 3.4 | **Escribir script de la base de datos** | 1.15d? | 2015-09-13 A | 2015-10-03 A |  | 100% |  |  |  |  | 20h | 20h |
| 83 | 3.4.1 | Script inicial | 17h? | 2015-09-13 A | 2015-10-03 A | 39 | 100% |  |  |  | Rodriguez-DESAROLLADOR; Rodriguez-ARQUITECTO DE SOFTWARE; Tiberti-ADMINISTRADOR DE BASE DE DATOS | 20h | 20h |
| 84 | 3.5 | **Revisión de pares de Plantillas** | 5.17d? | 2015-07-26 A | 2015-10-27 A |  | 100% |  |  |  |  | 16h | 16h |
| 85 | 3.5.1 | Revision 1 | 4h? | 2015-07-26 A | 2015-08-09 A | 53 | 100% |  |  |  | Tiberti-DESAROLLADOR; Rodriguez-DESAROLLADOR | 4h | 4h |
| 86 | 3.5.2 | Revision 2 | 4h? | 2015-09-12 A | 2015-09-26 A | 58 | 100% |  |  |  | Tiberti-DESAROLLADOR; Rodriguez-DESAROLLADOR | 4h | 4h |
| 87 | 3.5.3 | Revision 3 | 4h? | 2015-10-17 A | 2015-10-18 A | 63 | 100% |  |  | AsociateYaContingencia | Tiberti-DESAROLLADOR; Rodriguez-DESAROLLADOR | 4h | 4h |
| 88 | 3.5.4 | Revision 4 | 4h? | 2015-10-18 A | 2015-10-27 A | 64 | 100% |  |  | AsociateYaContingencia | Croci-DESAROLLADOR; Rodriguez-DESAROLLADOR | 4h | 4h |

| ID | WBS | Task | Duration | Start | Finish | Predecessors | Complete | Remaining | Total slack | Constraint | Calendar | Resources | Work | Actual work |
| --- | --- | --- | --- | --- | --- | --- | --- | --- | --- | --- | --- | --- | --- | --- |
| 89 | 3.6 | **Revisión de pares de la base de datos** | 1.71d? | 2015-10-03 A | 2015-11-01 A |  | 100% |  |  |  |  |  | 18h | 18h |
| 90 | 3.6.1 | Revision 1 | 14.02h? | 2015-10-03 A | 2015-11-01 A | 83 | 100% |  |  |  |  | Budic-DESAROLLADOR; Croci-DESAROLLADOR | 18h | 18h |
| 91 | 3.7 | **Revisión de pares de PHP** | 7.48d? | 2015-06-27 A | 2015-11-07 |  | 81% | 1.42d? | 0d |  |  |  | 42h | 34h |
| 92 | 3.7.1 | Revision 1 | 5h? | 2015-06-27 A | 2015-07-04 A | 66 | 100% |  |  |  |  | Tiberti-DESAROLLADOR; Rodriguez-DESAROLLADOR | 10h | 10h |
| 93 | 3.7.2 | Revision 2 | 6h? | 2015-09-05 A | 2015-09-12 A | 72 | 100% |  |  |  |  | Rodriguez-DESAROLLADOR; Tiberti-DESAROLLADOR | 12h | 12h |
| 94 | 3.7.3 | Revision 3 | 6h? | 2015-09-26 A | 2015-09-27 A | 76 | 100% |  |  |  | AsociateYaContingencia | Rodriguez-DESAROLLADOR; Tiberti-DESAROLLADOR | 12h | 12h |
| 95 | 3.7.4 | Revision 4 | 4h? | 2015-11-06 | 2015-11-07 | 81 |  |  | 0d |  | AsociateYaContingencia | Rodriguez-DESAROLLADOR; Tiberti-DESAROLLADOR | 8h |  |
| 96 | 3.8 | **Promoción** | 1.06d | 2015-08-23 A | 2015-09-12 A |  | 100% |  |  |  |  |  | 28h | 28h |
| 97 | 3.8.1 | Realizar presentación comercial | 10h | 2015-08-30 A | 2015-09-12 A | 98 | 100% |  |  |  |  | Tiberti-ANALISTA FUNCIONAL; Croci-DISEÑADOR DE EXPERIENCIA DE USUARIO; Budic-PROJECT MANAGER | 20h | 20h |
| 98 | 3.8.2 | Realizar poster comercial | 8h | 2015-08-23 A | 2015-08-30 A | 31 | 100% |  |  | start no earlier than 2015-07-22 |  | Croci-DISEÑADOR DE EXPERIENCIA DE USUARIO; Budic-PROJECT MANAGER | 8h | 8h |
| 99 | 3.9 | **Legales** | 1.85d? | 2015-09-13 A | 2015-10-17 A |  | 100% |  |  |  |  |  | 92h | 92h |
| 100 | 3.9.1 | Desarrollar contrato Fideicomiso | 40h? | 2015-09-20 A | 2015-10-04 A | 103 | 100% |  |  |  |  | Tiberti-ANALISTA LEGAL | 40h | 40h |
| 101 | 3.9.2 | Desarrollar contrato de inversion | 12h? | 2015-10-04 A | 2015-10-10 A | 103 | 100% |  |  |  |  | Tiberti-ANALISTA LEGAL | 12h | 12h |
| 102 | 3.9.3 | Desarrollar términos y condiciones | 20h? | 2015-10-10 A | 2015-10-17 A | 100, 101 | 100% |  |  |  |  | Tiberti-ANALISTA LEGAL | 20h | 20h |
| 103 | 3.9.4 | Desarrollar reglas de negocio y aspectos legales | 20h? | 2015-09-13 A | 2015-09-20 A | 22 | 100% |  |  |  |  | Tiberti-ANALISTA LEGAL | 20h | 20h |
| 104 | 4 | **Testing** | 5.04d? | 2015-08-29 A | 2015-11-23 |  | 33% | 3.39d? | 0d |  |  |  | 131h | 36h |
| 105 | 4.1 | Armar el plan de pruebas | 12h | 2015-09-06 A | 2015-09-20 A | 106 | 100% |  |  |  |  | Tiberti-ANALISTA FUNCIONAL; Budic-PROJECT MANAGER | 20h | 20h |
| 106 | 4.2 | Definir los casos de prueba | 13.6h | 2015-08-29 A | 2015-09-06 A | 26, 30 | 100% |  |  |  |  | Tiberti-ANALISTA FUNCIONAL; Budic-PROJECT MANAGER | 16h | 16h |
| 107 | 4.3 | **Ejecutar los casos de prueba** | 2.17d? | 2015-11-07 | 2015-11-23 |  |  |  | 0d |  | AsociateYaContingencia |  | 90h |  |
| 108 | 4.3.1 | Ciclo #1 | 10h? | 2015-11-07 | 2015-11-08 | 87, 90, 95 |  |  | 0d |  |  | Budic-TESTER; Tiberti-TESTER | 18h |  |
| 109 | 4.3.2 | Ciclo #2 | 10h? | 2015-11-08 | 2015-11-14 | 114 |  |  | 0d |  |  | Budic-TESTER; Tiberti-TESTER | 18h |  |
| 110 | 4.3.3 | Ciclo #3 | 10h? | 2015-11-14 | 2015-11-15 | 115 |  |  | 0d |  |  | Budic-TESTER; Tiberti-TESTER | 18h |  |
| 111 | 4.3.4 | Ciclo #4 | 10h? | 2015-11-15 | 2015-11-21 | 116 |  |  | 0d |  |  | Budic-TESTER; Tiberti-TESTER | 18h |  |
| 112 | 4.3.5 | Ciclo #5 | 10h? | 2015-11-21 | 2015-11-23 | 117 |  |  | 0d |  |  | Budic-TESTER; Tiberti-TESTER | 18h |  |

| ID | WBS | Task | Duration | Start | Finish | Predecessors | Complete | Remaining | Total slack | Calendar | Resources | Work | Actual work |
| --- | --- | --- | --- | --- | --- | --- | --- | --- | --- | --- | --- | --- | --- |
| 113 | 4.4 | **Documentar resultados de las pruebas** | 1.77d? | 2015-11-08 | 2015-11-23 |  |  |  | 0d | AsociateYaContingencia |  | 5h |  |
| 114 | 4.4.1 | Ciclo #1 | 0.5h? | 2015-11-08 | 2015-11-08 | 108 |  |  | 0d |  | Budic-TESTER; Tiberti-TESTER | 1h |  |
| 115 | 4.4.2 | Ciclo #2 | 0.5h? | 2015-11-14 | 2015-11-14 | 109 |  |  | 0d |  | Budic-TESTER; Tiberti-TESTER | 1h |  |
| 116 | 4.4.3 | Ciclo #3 | 0.5h? | 2015-11-15 | 2015-11-15 | 110 |  |  | 0d |  | Budic-TESTER; Tiberti-TESTER | 1h |  |
| 117 | 4.4.4 | Ciclo #4 | 0.5h? | 2015-11-21 | 2015-11-21 | 111 |  |  | 0d |  | Budic-TESTER; Tiberti-TESTER | 1h |  |
| 118 | 4.4.5 | Ciclo #5 | 0.5h? | 2015-11-23 | 2015-11-23 | 112 |  |  | 0d |  | Budic-TESTER; Tiberti-TESTER | 1h |  |
| 119 | 5 | **Manuales** | 0.19d | 2015-11-01 A | 2015-11-07 |  | 20% | 0.15d | 1.31d |  |  | 10h | 2h |
| 120 | 5.1 | Redactar manual de usuario | 10h | 2015-11-01 A | 2015-11-07 | 89, 106 | 20% | 8h | 2.71d | AsociateYaContingencia | Croci-DISEÑADOR DE EXPERIENCIA DE USUARIO | 10h | 2h |
| 121 | 6 | **Finalización del Proyecto** | 0.4d | 2015-11-23 | 2015-11-28 |  |  |  | 0d | AsociateYaContingencia |  | 26h |  |
| 122 | 6.1 | Reflexionar sobre la experiencia realizada | 0.5h | 2015-11-23 | 2015-11-24 | 113, 6, 12, 15, 17, 19, 21, 26, 30, 32, 34, 39, 91, 98 |  |  | 0d | AsociateYaContingencia | Tiberti-ADMINISTRADOR DE BASE DE DATOS; Tiberti-ADMINISTRADOR DEL ENTORNO DE DESARROLLO; Tiberti-ANALISTA FUNCIONAL; Rodriguez-ARQUITECTO DE SOFTWARE; Tiberti-DESAROLLADOR; Croci-DISEÑADOR DE EXPERIENCIA DE USUARIO; Budic-PROJECT MANAGER; Budic-TESTER | 4h |  |
| 123 | 6.2 | Analizar errores cometidos | 1h | 2015-11-24 | 2015-11-25 | 122 |  |  | 0d | AsociateYaContingencia | Tiberti-ADMINISTRADOR DE BASE DE DATOS; Tiberti-ADMINISTRADOR DEL ENTORNO DE DESARROLLO; Tiberti-ANALISTA FUNCIONAL; Rodriguez-ARQUITECTO DE SOFTWARE; Tiberti-DESAROLLADOR; Croci-DISEÑADOR DE EXPERIENCIA DE USUARIO; Budic-PROJECT MANAGER; Budic-TESTER | 8h |  |
| 124 | 6.3 | Documentación de cierre de proyecto | 6h | 2015-11-25 | 2015-11-28 | 123 |  |  | 0d | AsociateYaContingencia | Tiberti-ANALISTA FUNCIONAL; Budic-PROJECT MANAGER | 12h |  |
| 125 | 6.4 | Cerrar el proyecto | 2h | 2015-11-28 | 2015-11-28 | 124 |  |  | 0d | AsociateYaContingencia | Budic-PROJECT MANAGER | 2h |  |
